# SR1421

Schedule from a web Gantt chart, 2024-08-21 to 2024-09-13.
Saturdays and Sundays are off

## Schedule

| ID | WBS | Task | Duration | Start | Finish | Predecessors | Status |
| --- | --- | --- | --- | --- | --- | --- | --- |
| 2 | 1 | **SR1420** | 18d | 2024-08-21 | 2024-09-13 |  |  |
| 3 | 1.1 | **需求/设计** | 7d | 2024-08-21 | 2024-08-29 |  |  |
| 4 | 1.1.1 | 研发需求 | 3d | 2024-08-21 | 2024-08-23 |  |  |
| 5 | 1.1.2 | UI/UE | 4d | 2024-08-26 | 2024-08-29 | 4 | waiting |
| 6 | 1.2 | **软件开发** | 7d | 2024-08-29 | 2024-09-06 |  |  |
| 7 | 1.2.1 | 技术方案 | 2d | 2024-08-29 | 2024-08-30 |  |  |
| 8 | 1.2.2 | 设计规格书 | 1d | 2024-09-02 | 2024-09-02 | 7 | waiting |
| 9 | 1.2.3 | 代码实现 | 3d | 2024-09-03 | 2024-09-05 | 8 | waiting |
| 10 | 1.2.4 | 单元测试 | 1d | 2024-09-06 | 2024-09-06 | 9 | waiting |
| 11 | 1.3 | **软件集成** | 6d | 2024-09-02 | 2024-09-09 |  |  |
| 12 | 1.3.1 | 集成计划 | 1d | 2024-09-02 | 2024-09-02 | 7 | waiting |
| 13 | 1.3.2 | 集成测试 | 1d | 2024-09-06 | 2024-09-06 | 9 | waiting |
| 14 | 1.3.3 | 集成报告 | 1d | 2024-09-09 | 2024-09-09 | 13 | waiting |
| 15 | 1.4 | **软件测试** | 10d | 2024-09-02 | 2024-09-13 |  |  |
| 16 | 1.4.1 | 测试计划 | 1d | 2024-09-02 | 2024-09-02 | 7 | waiting |
| 17 | 1.4.2 | 软件测试 | 2d | 2024-09-09 | 2024-09-10 | 13 | waiting |
| 18 | 1.4.3 | 测试报告 | 1d | 2024-09-11 | 2024-09-11 | 17 | waiting |
| 19 | 1.4.4 | 901 | 1d | 2024-09-12 | 2024-09-12 | 18 | waiting |
| 20 | 1.4.5 | RHF | 1d | 2024-09-13 | 2024-09-13 | 19 | waiting |
| 21 | 2 | **SR1420-i** | 1d | 2024-08-21 | 2024-08-21 |  |  |
| 22 | 2.1 | **软件开发** | 1d | 2024-08-21 | 2024-08-21 |  |  |
| 23 | 2.1.1 | 设计规格书 | 1d | 2024-08-21 | 2024-08-21 |  |  |
